# HKMCApplicationSWPlan

How a schedule from MS Project changed from version to version. A marks actual dates.

## Version 1 (saved 2020-04-06)

Note of the change: Added Planning for the managing schedule

| ID | WBS | Task | Duration | Start | Finish | Predecessors | Complete | Total float |
| --- | --- | --- | --- | --- | --- | --- | --- | --- |
| 1 | 1 | **HKMC 2020 proto** | 106.3d | 2020-02-13 A | 2020-07-15 |  | 25% | 0d |
| 2 |  | HKMC R0 SDB | 0d | 2020-02-13 | 2020-02-13 |  |  |  |
| 3 | 1.2 | **SW Release R0** | 51.3d | 2020-02-13 A | 2020-04-28 |  | 50% | 55d |
| 4 | 1.2.1 | **Systems** | 16.8d | 2020-02-13 A | 2020-03-06 |  | 80% | 1.2d |
| 5 |  | Creation of SDB | 16.8d | 2020-02-13 A | 2020-03-06 | 2 | 80% | 1.2d |
| 6 |  | SDB Release | 0d | 2020-03-06 | 2020-03-06 | 5 |  | 1.2d |
| 7 | 1.2.2 | **Application SW** | 43.3d | 2020-02-25 A | 2020-04-28 |  | 44% | 55d |
| 8 | 1.2.2.1 | **SW Architecture** | 19d | 2020-03-06 A | 2020-04-03 |  | 57% | 70.5d |
| 9 |  | SW Adaptors Strategy. | 2d | 2020-03-06 A | 2020-03-10 | 6 | 80% | 12d |
| 10 |  | SW Architecture in EA Development | 4d | 2020-03-24 A | 2020-03-30 | 9, 26, 47, 67, 24, 44, 64, 19, 84, 87 | 50% | 2.1d |
| 11 |  | SW EA Architecture Review | 3d | 2020-03-30 A | 2020-04-03 | 10 | 70% | 70.5d |
| 12 |  | SW EA Architecture Release | 0d | 2020-04-03 | 2020-04-03 | 11 |  | 70.5d |
| 13 | 1.2.2.1.5 | **SW Architecture ARXML 's Development** | 7d | 2020-03-12 A | 2020-03-23 |  | 57% | 2d |
| 14 |  | Adaptors Design in Davinci Developer. | 4d | 2020-03-12 A | 2020-03-18 | 24, 44, 64, 6, 84 | 80% | 0.8d |
| 15 |  | Adaptors ARXML Generation for simulink import. | 1d | 2020-03-18 A | 2020-03-19 | 14 | 80% | 2d |
| 16 |  | Scheduler for ASP SW Integration | 1d | 2020-03-19 | 2020-03-20 | 15 |  | 2d |
| 17 |  | Scheduler for SW Adaptors. | 1d | 2020-03-20 | 2020-03-23 | 16 |  | 2d |
| 18 |  | ARXML's Review for Basic SW & Adaptors Development | 1d | 2020-03-23 | 2020-03-24 | 17 |  | 2d |
| 19 |  | ARXML's Release | 0d | 2020-03-24 A | 2020-03-24 | 18 | 80% | 2d |
| 20 | 1.2.2.2 | **Adaptor 1 : FCA-Car/Ped Adaptor Development** | 17.5d | 2020-03-06 A | 2020-04-02 |  | 63% | 0.4d |
| 21 | 1.2.2.2.1 | **Feature_SignalInterfaceMatrix** | 2d | 2020-03-06 A | 2020-03-10 |  | 80% | 1.2d |
| 22 |  | Creation of SignalInterfaceMatrix | 12h | 2020-03-06 A | 2020-03-10 | 6 | 80% | 0.4d |
| 23 |  | Review of SignalInterface Matrix | 4h | 2020-03-10 A | 2020-03-10 | 22 | 80% | 1.2d |
| 24 |  | Release of FCA Car7Ped Adaptor SignalInterface Matrix | 0d | 2020-03-10 A | 2020-03-10 | 23 | 80% | 1.2d |
| 25 |  | Adaptor Detailed Design( if it is a small gap FD has to do that, if it is a big gap FO has to do that). | 0d | 2020-03-12 | 2020-03-12 | 21, 64 |  | 3.2d |
| 26 |  | Adaptor Detailed Design Review | 0d | 2020-03-12 | 2020-03-12 | 25 |  | 3.2d |
| 27 |  | Release of FCA Car/Ped Adaptor Detailed Design | 0d | 2020-03-12 | 2020-03-12 | 26 |  | 3.2d |
| 28 | 1.2.2.2.5 | **Adaptor Simulink Development** | 11.5d | 2020-03-12 A | 2020-03-30 |  | 80% | 0.4d |
| 29 |  | Simulink Design Development | 4d | 2020-03-12 A | 2020-03-18 | 27 | 80% | 4.8d |
| 30 |  | Simulink Import of ARXML & linking to Development Models | 4h | 2020-03-26 A | 2020-03-27 | 19, 69 | 80% | 0.4d |
| 31 |  | Simulink Design Release & Review | 4h | 2020-03-27 A | 2020-03-27 | 30 | 80% | 0.4d |
| 32 |  | Adaptor Code Generation from Simulink. | 4h | 2020-03-27 A | 2020-03-30 | 31 | 80% | 0.4d |
| 33 |  | Release of FCA-Car/Ped Adaptor Simulink Design | 0d | 2020-03-30 | 2020-03-30 | 32 |  | 0.4d |
| 34 | 1.2.2.2.6 | **SW Unit Test Specification & Test Cases Development** | 0d | 2020-03-30 | 2020-03-30 |  |  | 0.4d |
| 35 |  | Adaptor Unit Test Specification. | 0d | 2020-03-30 | 2020-03-30 | 33 |  | 0.4d |
| 36 |  | Adaptor Unit Test Cases Implementation. | 0d | 2020-03-30 | 2020-03-30 | 35 |  | 0.4d |
| 37 |  | Adaptor Unit Test Execution and its report generation. | 0d | 2020-03-30 | 2020-03-30 | 36 |  | 0.4d |
| 38 |  | SW Source Code & Unit Test Report Review | 2d | 2020-03-30 | 2020-04-02 | 37 |  | 0.4d |
| 39 |  | Release of FCA-Car/Ped SW Source Code & SW Unit Test Report | 0d | 2020-04-02 | 2020-04-02 | 38 |  | 0.4d |
| 40 | 1.2.2.3 | **Adaptor 2 : LKA-L Adaptor Development** | 16.5d | 2020-03-06 A | 2020-03-31 |  | 52% | 0.4d |
| 41 | 1.2.2.3.1 | **Signal Matrix preparation for Adaptor for architecture support.** | 2d | 2020-03-06 | 2020-03-10 |  |  | 1.2d |
| 42 |  | Creation of SignalInterfaceMatrix | 12h | 2020-03-06 | 2020-03-10 | 6 |  | 1.2d |
| 43 |  | Review & Release of SignalInterface Matrix | 4h | 2020-03-10 | 2020-03-10 | 42 |  | 1.2d |
| 44 |  | Release of LKA-L Adaptor SignalInterface Matrix | 0d | 2020-03-10 | 2020-03-10 | 43 |  | 1.2d |
| 45 |  | Adaptor Detailed Design( if it is a small gap FD has to do that, if it is a big gap FO has to do that). | 0d | 2020-03-12 | 2020-03-12 | 44, 84 |  | 3.2d |
| 46 |  | Adaptor Detailed Design Review | 0d | 2020-03-12 | 2020-03-12 | 45 |  | 3.2d |
| 47 |  | Release of LKA-L Adaptor Detailed Design | 0d | 2020-03-12 | 2020-03-12 | 46 |  | 3.2d |
| 48 | 1.2.2.3.5 | **Adaptor Simulink Development** | 11.5d | 2020-03-12 A | 2020-03-30 |  | 80% | 0.4d |
| 49 |  | Simulink Design Development | 4d | 2020-03-12 A | 2020-03-18 | 47 | 80% | 4.8d |
| 50 |  | Simulink Import of ARXML & linking to Development Models | 4h | 2020-03-26 A | 2020-03-27 | 19, 89 | 80% | 0.4d |
| 51 |  | Simulink Design Release & Review | 4h | 2020-03-27 A | 2020-03-27 | 50 | 80% | 0.4d |
| 52 |  | Adaptor Code Generation from Simulink. | 4h | 2020-03-27 A | 2020-03-30 | 51 | 80% | 0.4d |
| 53 |  | Release of LKA-L Adaptor Simulink Design | 0h | 2020-03-30 | 2020-03-30 | 52 |  | 0.4d |
| 54 | 1.2.2.3.6 | **SW Unit Test Specification & Test Cases Development** | 0d | 2020-03-30 | 2020-03-30 |  |  | 0.4d |
| 55 |  | Adaptor Unit Test Specification. | 0d | 2020-03-30 | 2020-03-30 | 53 |  | 0.4d |
| 56 |  | Adaptor Unit Test Cases Implementation. | 0d | 2020-03-30 | 2020-03-30 | 55 |  | 0.4d |
| 57 |  | Adaptor Unit Test Execution and its report generation. | 0d | 2020-03-30 | 2020-03-30 | 56 |  | 0.4d |
| 58 |  | SW Source Code & Unit Test Report Review | 1d | 2020-03-30 | 2020-03-31 | 57 |  | 0.4d |
| 59 |  | Release of LKA_L SW Source Code & Unit Test Report | 0d | 2020-03-31 | 2020-03-31 | 58 |  | 0.4d |
| 60 | 1.2.2.4 | **Vehicle Input Adaptor** | 22.5d | 2020-03-10 A | 2020-04-13 |  | 60% | 55d |
| 61 | 1.2.2.4.1 | **Signal Matrix preparation for Adaptor for architecture support.** | 2d | 2020-03-10 A | 2020-03-12 |  | 80% | 3.2d |
| 62 |  | Creation of SignalInterfaceMatrix | 12h | 2020-03-10 A | 2020-03-12 | 6, 24 | 80% | 0.4d |
| 63 |  | Review & Release of SignalInterface Matrix | 4h | 2020-03-12 A | 2020-03-12 | 62 | 80% | 3.2d |
| 64 |  | Release of Veh_Inp Adaptor SignalInterface Matrix | 0d | 2020-03-12 A | 2020-03-12 | 63 | 80% | 3.2d |
| 65 |  | Adaptor Detailed Design( if it is a small gap FD has to do that, if it is a big gap FO has to do that). | 0d | 2020-03-18 | 2020-03-18 | 61, 29 |  | 4.8d |
| 66 |  | Adaptor Detailed Design Review | 0d | 2020-03-18 | 2020-03-18 | 65 |  | 4.8d |
| 67 |  | Release of Veh_Inp Adaptor Detailed Design | 0d | 2020-03-18 | 2020-03-18 | 66 |  | 4.8d |
| 68 | 1.2.2.4.5 | **Adaptor Simulink Development** | 12.5d | 2020-03-18 A | 2020-04-07 |  | 62% | 55d |
| 69 |  | Simulink Design Development | 6d | 2020-03-18 A | 2020-03-26 | 67 | 80% | 0.4d |
| 70 |  | Simulink Import of ARXML & linking to Development Models | 4h | 2020-04-02 A | 2020-04-02 | 19, 39 | 80% | 0.4d |

| ID | WBS | Task | Duration | Start | Finish | Predecessors | Complete | Total float |
| --- | --- | --- | --- | --- | --- | --- | --- | --- |
| 71 |  | Simulink Design Release & Review | 4h | 2020-04-02 A | 2020-04-03 | 70 | 80% | 55d |
| 72 |  | Adaptor Code Generation from Simulink. | 2d | 2020-04-03 | 2020-04-07 | 71 |  | 55d |
| 73 |  | Release of Veh_Inp Adaptor Simulink Design | 0d | 2020-04-07 | 2020-04-07 | 72 |  | 55d |
| 74 | 1.2.2.4.6 | **SW Unit Test Specification & Test Cases Development** | 2d | 2020-04-07 | 2020-04-09 |  |  | 55d |
| 75 |  | Adaptor Unit Test Specification. | 0d | 2020-04-07 | 2020-04-08 | 73 |  | 55d |
| 76 |  | Adaptor Unit Test Cases Implementation. | 0d | 2020-04-08 | 2020-04-09 | 75 |  | 55d |
| 77 |  | Adaptor Unit Test Execution and its report generation. | 0d | 2020-04-09 | 2020-04-10 | 76 |  | 55d |
| 78 |  | SW Source Code & Unit Test Report Review | 1d | 2020-04-10 | 2020-04-13 | 77 |  | 55d |
| 79 |  | Release of Vhe_In Adaptor SW Source Code & Unit Test Report | 0d | 2020-04-13 | 2020-04-13 | 78 |  | 55d |
| 80 | 1.2.2.5 | **Vehicle Output Adaptor** | 18.5d | 2020-03-10 A | 2020-04-07 |  | 57% | 69d |
| 81 | 1.2.2.5.1 | **Signal Matrix preparation for Adaptor for architecture support.** | 2d | 2020-03-10 A | 2020-03-12 |  | 80% | 3.2d |
| 82 |  | Creation of SignalInterfaceMatrix | 12h | 2020-03-10 A | 2020-03-12 | 6, 44 | 80% | 0.4d |
| 83 |  | Review & Release of SignalInterface Matrix | 4h | 2020-03-12 A | 2020-03-12 | 82 | 80% | 3.2d |
| 84 |  | Release of Veh_Out Adaptor SignalInterface Matrix | 0d | 2020-03-12 A | 2020-03-12 | 83 | 80% | 3.2d |
| 85 |  | Adaptor Detailed Design( if it is a small gap FD has to do that, if it is a big gap FO has to do that). | 0d | 2020-03-18 | 2020-03-18 | 81, 49 |  | 4.8d |
| 86 |  | Adaptor Detailed Design Review | 0d | 2020-03-18 | 2020-03-18 | 85 |  | 81.5d |
| 87 |  | Release of Veh_Out Adaptor Detailed Design | 0d | 2020-03-18 | 2020-03-18 | 85 |  | 4.8d |
| 88 | 1.2.2.5.5 | **Adaptor Simulink Development** | 11.5d | 2020-03-18 A | 2020-04-06 |  | 58% | 59d |
| 89 |  | Simulink Design Development | 6d | 2020-03-18 A | 2020-03-26 | 87 | 80% | 0.4d |
| 90 |  | Simulink Import of ARXML & linking to Development Models | 4h | 2020-03-31 A | 2020-03-31 | 19, 59 | 80% | 59d |
| 91 |  | Simulink Design Release & Review | 4h | 2020-03-31 | 2020-04-02 | 90 |  | 59d |
| 92 |  | Adaptor Code Generation from Simulink. | 2d | 2020-04-02 | 2020-04-06 | 91 |  | 59d |
| 93 |  | Release of Veh_Out Adaptor Simulink Design | 0d | 2020-04-06 | 2020-04-06 | 92 |  | 59d |
| 94 | 1.2.2.5.6 | **SW Unit Test Specification & Test Cases Development** | 0d | 2020-04-06 | 2020-04-06 |  |  | 59d |
| 95 |  | Adaptor Unit Test Specification. | 0d | 2020-04-06 | 2020-04-06 | 93 |  | 59d |
| 96 |  | Adaptor Unit Test Cases Implementation. | 0d | 2020-04-06 | 2020-04-06 | 95 |  | 59d |
| 97 |  | Adaptor Unit Test Execution and its report generation. | 0d | 2020-04-06 | 2020-04-06 | 96 |  | 59d |
| 98 |  | SW Source Code & Unit Test Report Review | 1d | 2020-04-06 | 2020-04-07 | 97 |  | 59d |
| 99 |  | Release of Veh_Out Adaptor SW Source Code & Unit Test Report | 0d | 2020-04-07 | 2020-04-07 | 98 |  | 59d |
| 100 | 1.2.2.6 | **SW Integration** | 43.3d | 2020-02-25 | 2020-04-28 |  |  | 55d |
| 101 |  | SW Integration Test Specification. | 4d | 2020-02-25 | 2020-02-28 |  |  | 92.3d |
| 102 |  | SW Integration Test Cases Implementation. | 2d | 2020-03-02 | 2020-03-03 | 101 |  | 92.3d |
| 103 |  | SW Integration. | 4d | 2020-04-13 | 2020-04-20 | 38, 59, 79, 99 |  | 55d |
| 104 |  | SW Integration Test execution & Its Rerport Generation. | 2d | 2020-04-20 | 2020-04-22 | 103 |  | 55d |
| 105 |  | SW Version Management. | 3d | 2020-04-20 | 2020-04-23 | 103 |  | 57d |
| 106 |  | SW Release Notes. | 1d | 2020-04-23 | 2020-04-24 | 105 |  | 57d |
| 107 |  | HKMC SW Integration | 1d | 2020-04-22 | 2020-04-23 | 104 |  | 55d |
| 108 |  | HKMC Application SW Release | 0d | 2020-04-23 | 2020-04-23 | 107 |  | 55d |
| 109 |  | App SW Integration Testing on MCU | 2d | 2020-04-24 | 2020-04-28 | 112 |  | 55d |
| 110 |  | HKMC Application SW Release for Testing | 0d | 2020-04-28 | 2020-04-28 | 109 |  | 55d |
| 111 | 1.2.3 | **Basic SW** | 1d | 2020-04-23 | 2020-04-24 |  |  | 55d |
| 112 |  | SW Integration Review | 1d | 2020-04-23 | 2020-04-24 | 108 |  | 55d |
| 113 |  | HKMC R2 SDB | 0d | 2020-04-06 | 2020-04-06 |  |  |  |
| 114 | 1.4 | **SW Release R2** | 70.3d | 2020-04-06 A | 2020-07-15 |  |  | 0d |
| 115 | 1.4.1 | **Systems** | 38.8d | 2020-04-06 | 2020-06-01 |  |  | 0d |
| 116 |  | Creation of SDB | 16.8d | 2020-04-06 | 2020-06-01 | 113 |  | 0d |
| 117 |  | SDB Release | 0d | 2020-06-01 | 2020-06-01 | 116 |  | 0d |
| 118 | 1.4.2 | **Application SW** | 70.3d | 2020-04-06 A | 2020-07-15 |  |  | 0d |
| 119 | 1.4.2.1 | **SW Architecture** | 19d | 2020-06-01 | 2020-06-26 |  |  | 6d |
| 120 |  | SW Adaptors Strategy. | 2d | 2020-06-01 | 2020-06-03 | 117 |  | 22.5d |
| 121 |  | SW Architecture in EA Development | 4d | 2020-06-17 | 2020-06-23 | 120, 137, 158, 178, 135, 155, 175, 130, 195, 198 |  | 12.5d |
| 122 |  | SW EA Architecture Review | 3d | 2020-06-23 | 2020-06-26 | 121 |  | 12.5d |
| 123 |  | SW EA Architecture Release | 0d | 2020-06-26 | 2020-06-26 | 122 |  | 12.5d |
| 124 | 1.4.2.1.5 | **SW Architecture ARXML 's Development** | 7d | 2020-06-05 | 2020-06-16 |  |  | 2d |
| 125 |  | Adaptors Design in Davinci Developer. | 4d | 2020-06-05 | 2020-06-11 | 117, 135, 155, 175, 195 |  | 2d |
| 126 |  | Adaptors ARXML Generation for simulink import. | 1d | 2020-06-11 | 2020-06-12 | 125 |  | 2d |
| 127 |  | Scheduler for ASP SW Integration | 1d | 2020-06-12 | 2020-06-15 | 126 |  | 2d |
| 128 |  | Scheduler for SW Adaptors. | 1d | 2020-06-15 | 2020-06-16 | 127 |  | 2d |
| 129 |  | ARXML's Review for Basic SW & Adaptors Development | 1d | 2020-06-16 | 2020-06-17 | 128 |  | 2d |
| 130 |  | ARXML's Release | 0d | 2020-06-17 | 2020-06-17 | 129 |  | 2d |
| 131 | 1.4.2.2 | **Adaptor 1 : FCA-Car/Ped Adaptor Development** | 17.5d | 2020-06-01 A | 2020-06-25 |  |  | 0d |
| 132 | 1.4.2.2.1 | **Feature_SignalInterfaceMatrix** | 2d | 2020-06-01 | 2020-06-03 |  |  | 0d |
| 133 |  | Creation of SignalInterfaceMatrix | 12h | 2020-06-01 | 2020-06-03 | 117 |  | 0d |
| 134 |  | Review of SignalInterface Matrix | 4h | 2020-06-03 | 2020-06-03 | 133 |  | 0d |
| 135 |  | Release of FCA Car7Ped Adaptor SignalInterface Matrix | 0d | 2020-06-03 | 2020-06-03 | 134 |  | 0d |
| 136 |  | Adaptor Detailed Design( if it is a small gap FD has to do that, if it is a big gap FO has to do that). | 0d | 2020-06-05 | 2020-06-05 | 132, 175 |  | 0d |
| 137 |  | Adaptor Detailed Design Review | 0d | 2020-06-05 | 2020-06-05 | 136 |  | 0d |
| 138 |  | Release of FCA Car/Ped Adaptor Detailed Design | 0d | 2020-06-05 | 2020-06-05 | 137 |  | 0d |
| 139 | 1.4.2.2.5 | **Adaptor Simulink Development** | 11.5d | 2020-06-05 | 2020-06-23 |  |  | 0d |
| 140 |  | Simulink Design Development | 4d | 2020-06-05 | 2020-06-11 | 138 |  | 0d |

| ID | WBS | Task | Duration | Start | Finish | Predecessors | Total float |
| --- | --- | --- | --- | --- | --- | --- | --- |
| 141 |  | Simulink Import of ARXML & linking to Development Models | 4h | 2020-06-19 | 2020-06-22 | 130, 180 | 0d |
| 142 |  | Simulink Design Release & Review | 4h | 2020-06-22 | 2020-06-22 | 141 | 0d |
| 143 |  | Adaptor Code Generation from Simulink. | 4h | 2020-06-22 | 2020-06-23 | 142 | 0d |
| 144 |  | Release of FCA-Car/Ped Adaptor Simulink Design | 0d | 2020-06-23 | 2020-06-23 | 143 | 0d |
| 145 | 1.4.2.2.6 | **SW Unit Test Specification & Test Cases Development** | 0d | 2020-06-23 | 2020-06-23 |  | 0d |
| 146 |  | Adaptor Unit Test Specification. | 0d | 2020-06-23 | 2020-06-23 | 144 | 0d |
| 147 |  | Adaptor Unit Test Cases Implementation. | 0d | 2020-06-23 | 2020-06-23 | 146 | 0d |
| 148 |  | Adaptor Unit Test Execution and its report generation. | 0d | 2020-06-23 | 2020-06-23 | 147 | 0d |
| 149 |  | SW Source Code & Unit Test Report Review | 2d | 2020-06-23 | 2020-06-25 | 148 | 0d |
| 150 |  | Release of FCA-Car/Ped SW Source Code & SW Unit Test Report | 0d | 2020-06-25 | 2020-06-25 | 149 | 0d |
| 151 | 1.4.2.3 | **Adaptor 2 : LKA-L Adaptor Development** | 16.5d | 2020-06-01 A | 2020-06-24 |  | 1d |
| 152 | 1.4.2.3.1 | **Signal Matrix preparation for Adaptor for architecture support.** | 2d | 2020-06-01 | 2020-06-03 |  | 1d |
| 153 |  | Creation of SignalInterfaceMatrix | 12h | 2020-06-01 | 2020-06-03 | 117 | 1d |
| 154 |  | Review & Release of SignalInterface Matrix | 4h | 2020-06-03 | 2020-06-03 | 153 | 1d |
| 155 |  | Release of LKA-L Adaptor SignalInterface Matrix | 0d | 2020-06-03 | 2020-06-03 | 154 | 1d |
| 156 |  | Adaptor Detailed Design( if it is a small gap FD has to do that, if it is a big gap FO has to do that). | 0d | 2020-06-05 | 2020-06-05 | 155, 195 | 1d |
| 157 |  | Adaptor Detailed Design Review | 0d | 2020-06-05 | 2020-06-05 | 156 | 1d |
| 158 |  | Release of LKA-L Adaptor Detailed Design | 0d | 2020-06-05 | 2020-06-05 | 157 | 1d |
| 159 | 1.4.2.3.5 | **Adaptor Simulink Development** | 11.5d | 2020-06-05 | 2020-06-23 |  | 1d |
| 160 |  | Simulink Design Development | 4d | 2020-06-05 | 2020-06-11 | 158 | 1d |
| 161 |  | Simulink Import of ARXML & linking to Development Models | 4h | 2020-06-19 | 2020-06-22 | 130, 200 | 1d |
| 162 |  | Simulink Design Release & Review | 4h | 2020-06-22 | 2020-06-22 | 161 | 1d |
| 163 |  | Adaptor Code Generation from Simulink. | 4h | 2020-06-22 | 2020-06-23 | 162 | 1d |
| 164 |  | Release of LKA-L Adaptor Simulink Design | 0h | 2020-06-23 | 2020-06-23 | 163 | 1d |
| 165 | 1.4.2.3.6 | **SW Unit Test Specification & Test Cases Development** | 0d | 2020-06-23 | 2020-06-23 |  | 1d |
| 166 |  | Adaptor Unit Test Specification. | 0d | 2020-06-23 | 2020-06-23 | 164 | 1d |
| 167 |  | Adaptor Unit Test Cases Implementation. | 0d | 2020-06-23 | 2020-06-23 | 166 | 1d |
| 168 |  | Adaptor Unit Test Execution and its report generation. | 0d | 2020-06-23 | 2020-06-23 | 167 | 1d |
| 169 |  | SW Source Code & Unit Test Report Review | 1d | 2020-06-23 | 2020-06-24 | 168 | 1d |
| 170 |  | Release of LKA_L SW Source Code & Unit Test Report | 0d | 2020-06-24 | 2020-06-24 | 169 | 1d |
| 171 | 1.4.2.4 | **Vehicle Input Adaptor** | 19.5d | 2020-06-03 | 2020-07-01 |  | 0d |
| 172 | 1.4.2.4.1 | **Signal Matrix preparation for Adaptor for architecture support.** | 2d | 2020-06-03 | 2020-06-05 |  | 0d |
| 173 |  | Creation of SignalInterfaceMatrix | 12h | 2020-06-03 | 2020-06-05 | 117, 135 | 0d |
| 174 |  | Review & Release of SignalInterface Matrix | 4h | 2020-06-05 | 2020-06-05 | 173 | 0d |
| 175 |  | Release of Veh_Inp Adaptor SignalInterface Matrix | 0d | 2020-06-05 | 2020-06-05 | 174 | 0d |
| 176 |  | Adaptor Detailed Design( if it is a small gap FD has to do that, if it is a big gap FO has to do that). | 0d | 2020-06-11 | 2020-06-11 | 140, 172 | 0d |
| 177 |  | Adaptor Detailed Design Review | 0d | 2020-06-11 | 2020-06-11 | 176 | 0d |
| 178 |  | Release of Veh_Inp Adaptor Detailed Design | 0d | 2020-06-11 | 2020-06-11 | 177 | 0d |
| 179 | 1.4.2.4.5 | **Adaptor Simulink Development** | 12.5d | 2020-06-11 | 2020-06-30 |  | 0d |
| 180 |  | Simulink Design Development | 6d | 2020-06-11 | 2020-06-19 | 178 | 0d |
| 181 |  | Simulink Import of ARXML & linking to Development Models | 4h | 2020-06-25 | 2020-06-25 | 130, 150 | 0d |
| 182 |  | Simulink Design Release & Review | 4h | 2020-06-25 | 2020-06-26 | 181 | 0d |
| 183 |  | Adaptor Code Generation from Simulink. | 2d | 2020-06-26 | 2020-06-30 | 182 | 0d |
| 184 |  | Release of Veh_Inp Adaptor Simulink Design | 0d | 2020-06-30 | 2020-06-30 | 183 | 0d |
| 185 | 1.4.2.4.6 | **SW Unit Test Specification & Test Cases Development** | 0d | 2020-06-30 | 2020-06-30 |  | 0d |
| 186 |  | Adaptor Unit Test Specification. | 0d | 2020-06-30 | 2020-06-30 | 184 | 0d |
| 187 |  | Adaptor Unit Test Cases Implementation. | 0d | 2020-06-30 | 2020-06-30 | 186 | 0d |
| 188 |  | Adaptor Unit Test Execution and its report generation. | 0d | 2020-06-30 | 2020-06-30 | 187 | 0d |
| 189 |  | SW Source Code & Unit Test Report Review | 1d | 2020-06-30 | 2020-07-01 | 188 | 0d |
| 190 |  | Release of Vhe_In Adaptor SW Source Code & Unit Test Report | 0d | 2020-07-01 | 2020-07-01 | 189 | 0d |
| 191 | 1.4.2.5 | **Vehicle Output Adaptor** | 18.5d | 2020-06-03 A | 2020-06-30 |  | 11d |
| 192 | 1.4.2.5.1 | **Signal Matrix preparation for Adaptor for architecture support.** | 2d | 2020-06-03 | 2020-06-05 |  | 1d |
| 193 |  | Creation of SignalInterfaceMatrix | 12h | 2020-06-03 | 2020-06-05 | 117, 155 | 1d |
| 194 |  | Review & Release of SignalInterface Matrix | 4h | 2020-06-05 | 2020-06-05 | 193 | 1d |
| 195 |  | Release of Veh_Out Adaptor SignalInterface Matrix | 0d | 2020-06-05 | 2020-06-05 | 194 | 1d |
| 196 |  | Adaptor Detailed Design( if it is a small gap FD has to do that, if it is a big gap FO has to do that). | 0d | 2020-06-11 | 2020-06-11 | 160, 192 | 1d |
| 197 |  | Adaptor Detailed Design Review | 0d | 2020-06-11 | 2020-06-11 | 196 | 23.5d |
| 198 |  | Release of Veh_Out Adaptor Detailed Design | 0d | 2020-06-11 | 2020-06-11 | 196 | 1d |
| 199 | 1.4.2.5.5 | **Adaptor Simulink Development** | 11.5d | 2020-06-11 | 2020-06-29 |  | 1d |
| 200 |  | Simulink Design Development | 6d | 2020-06-11 | 2020-06-19 | 198 | 1d |
| 201 |  | Simulink Import of ARXML & linking to Development Models | 4h | 2020-06-24 | 2020-06-24 | 130, 170 | 1d |
| 202 |  | Simulink Design Release & Review | 4h | 2020-06-24 | 2020-06-25 | 201 | 1d |
| 203 |  | Adaptor Code Generation from Simulink. | 2d | 2020-06-25 | 2020-06-29 | 202 | 1d |
| 204 |  | Release of Veh_Out Adaptor Simulink Design | 0d | 2020-06-29 | 2020-06-29 | 203 | 1d |
| 205 | 1.4.2.5.6 | **SW Unit Test Specification & Test Cases Development** | 0d | 2020-06-29 | 2020-06-29 |  | 1d |
| 206 |  | Adaptor Unit Test Specification. | 0d | 2020-06-29 | 2020-06-29 | 204 | 1d |
| 207 |  | Adaptor Unit Test Cases Implementation. | 0d | 2020-06-29 | 2020-06-29 | 206 | 1d |
| 208 |  | Adaptor Unit Test Execution and its report generation. | 0d | 2020-06-29 | 2020-06-29 | 207 | 1d |
| 209 |  | SW Source Code & Unit Test Report Review | 1d | 2020-06-29 | 2020-06-30 | 208 | 1d |
| 210 |  | Release of Veh_Out Adaptor SW Source Code & Unit Test Report | 0d | 2020-06-30 | 2020-06-30 | 209 | 1d |

| ID | WBS | Task | Duration | Start | Finish | Predecessors | Total float |
| --- | --- | --- | --- | --- | --- | --- | --- |
| 211 | 1.4.2.6 | **SW Integration** | 70.3d | 2020-04-06 | 2020-07-15 |  | 0d |
| 212 |  | SW Integration Test Specification. | 4d | 2020-04-06 | 2020-04-09 | 113 | 64.3d |
| 213 |  | SW Integration Test Cases Implementation. | 2d | 2020-04-10 | 2020-04-13 | 212 | 64.3d |
| 214 |  | SW Integration. | 4d | 2020-07-01 | 2020-07-07 | 149, 170, 190, 210 | 0d |
| 215 |  | SW Integration Test execution & Its Rerport Generation. | 2d | 2020-07-07 | 2020-07-09 | 214 | 0d |
| 216 |  | SW Version Management. | 3d | 2020-07-07 | 2020-07-10 | 214 | 2d |
| 217 |  | SW Release Notes. | 1d | 2020-07-10 | 2020-07-13 | 216 | 2d |
| 218 |  | HKMC SW Integration | 1d | 2020-07-09 | 2020-07-10 | 215 | 0d |
| 219 |  | HKMC Application SW Release | 0d | 2020-07-10 | 2020-07-10 | 218 | 0d |
| 220 |  | App SW Integration Testing on MCU | 2d | 2020-07-13 | 2020-07-15 | 223 | 0d |
| 221 |  | HKMC Application SW Release for Testing | 0d | 2020-07-15 | 2020-07-15 | 220 | 0d |
| 222 | 1.4.3 | **Basic SW** | 1d | 2020-07-10 | 2020-07-13 |  | 0d |
| 223 |  | SW Integration Review | 1d | 2020-07-10 | 2020-07-13 | 219 | 0d |

## Version 2 (saved 2020-04-10)

Note of the change: changed the development Schedule(mpp) and added process

Last finish stays 2020-07-15.

Added:

| ID | Task | Duration | Start | Finish | Predecessors | Resources |
| --- | --- | --- | --- | --- | --- | --- |
| 13 | **SW Architecture ARXML 's Development(Phase1) : VehicleInput, VehicleOutput, LKA, FCA** | 7d | 2020-03-12 A | 2020-03-23 |  | Soo-Jin Ahn |
| 14 | Adaptors Design in Davinci Developer. | 4d | 2020-03-12 A | 2020-03-18 | 30, 50, 70, 6, 90 | Soo-Jin Ahn |
| 18 | ARXML's Review for Adaptors Development | 2d | 2020-03-23 A | 2020-03-25 | 17 | Soo-Jin Ahn; Choong-Yup Shin; Hoon Bae; Young-Jung Huh |
| 19 | ARXML's Release | 1d | 2020-03-24 A | 2020-03-25 | 18 | Soo-Jin Ahn |
| 22 | Adaptors ARXML Generation for BSW & ASW | 2d | 2020-04-21 | 2020-04-22 | 21 | Soo-Jin Ahn |
| 23 | Create Hkmc WorkSpace for Davinci Configurator(dcf) | 1d | 2020-04-23 | 2020-04-23 | 22 | Soo-Jin Ahn |

Changed:

| ID | Task | Start | Finish | Duration | Complete | Total float | Predecessors | Other |
| --- | --- | --- | --- | --- | --- | --- | --- | --- |
| 3 | **SW Release R0** |  | 2020-04-28 → 2020-05-21 (+23d) | 51.3d → 67.2d | 50% → 46% | 55d → 39.1d |  |  |
| 7 | **Application SW** |  | 2020-04-28 → 2020-05-21 (+23d) | 43.3d → 59.2d | 44% → 41% | 55d → 39.1d |  |  |
| 8 | **SW Architecture** |  | 2020-04-03 → 2020-05-18 (+45d) | 19d → 47.6d | 57% → 43% | 70.5d → 41.9d |  |  |
| 10 | SW Architecture in EA Development |  | 2020-03-30 → 2020-04-29 (+30d) |  |  | 2.1d → -18.1d | 9, 32, 53, 73, 30, 50, 70, 25, 90, 93 → 9, 32, 53, 73, 30, 50, 70, 25, 90, 93, 19 |  |
| 11 | SW EA Architecture Review |  | 2020-04-03 → 2020-05-01 (+28d) |  |  | 70.5d → 52.4d |  |  |
| 12 | SW EA Architecture Release | 2020-04-03 → 2020-05-01 (+28d) | 2020-04-03 → 2020-05-01 (+28d) |  |  | 70.5d → 52.4d |  |  |
| 15 | Adaptors ARXML Generation for simulink import. |  |  |  |  | 2d → 1.6d | 21 → 14 |  |
| 20 | **SW Architecture ARXML 's Development(Phase2) : RadarAdap, STC?, CanBusOff, DTC, Diag** | 2020-03-12 A → 2020-04-14 A (+33d) | 2020-03-23 → 2020-05-18 (+56d) | 7d → 22.4d | 57% → 0% | 2d → none |  | was named SW Architecture ARXML 's Development |
| 21 | Adaptors Design in Davinci Developer. | 2020-03-12 A → 2020-04-14 (+33d) | 2020-03-18 → 2020-04-20 (+33d) |  | 80% → 0% | 0.8d → 0d | 30, 50, 70, 6, 90 → none |  |
| 24 | ARXML's Review for Basic SW & Adaptors Development | 2020-03-23 → 2020-04-24 (+32d) | 2020-03-24 → 2020-04-27 (+34d) | 1d → 2d |  | 2d → 0d | 17 → 23 |  |
| 25 | ARXML's Release | 2020-03-24 A → 2020-04-27 (+34d) | 2020-03-24 → 2020-04-27 (+34d) |  | 80% → 0% | 2d → 0d |  |  |
| 26 | **Adaptor 1 : FCA-Car/Ped Adaptor Development** |  |  |  | 63% → 57% |  |  |  |
| 32 | Adaptor Detailed Design Review |  | 2020-03-12 → 2020-03-13 (+1d) | 0d → 1d |  | 3.2d → 2.2d |  |  |
| 33 | Release of FCA Car/Ped Adaptor Detailed Design | 2020-03-12 → 2020-03-13 (+1d) | 2020-03-12 → 2020-03-13 (+1d) |  |  | 3.2d → 2.2d |  |  |
| 36 | Simulink Import of ARXML & linking to Development Models |  |  |  |  |  | 25, 75 → 75, 19 |  |
| 46 | **Adaptor 2 : LKA-L Adaptor Development** |  | 2020-03-31 → 2020-04-29 (+29d) | 16.5d → 35.5d |  | 0.4d → -18.6d |  |  |
| 54 | **Adaptor Simulink Development** |  | 2020-03-30 → 2020-04-28 (+29d) | 11.5d → 30.5d |  | 0.4d → -18.6d |  |  |
| 56 | Simulink Import of ARXML & linking to Development Models |  | 2020-03-27 → 2020-04-28 (+32d) |  |  | 0.4d → -19.4d | 25, 95 → 25, 95, 19 |  |
| 57 | Simulink Design Release & Review |  | 2020-03-27 → 2020-04-28 (+32d) |  |  | 0.4d → -19d |  |  |
| 58 | Adaptor Code Generation from Simulink. |  | 2020-03-30 → 2020-04-28 (+29d) |  |  | 0.4d → -18.6d |  |  |
| 59 | Release of LKA-L Adaptor Simulink Design | 2020-03-30 → 2020-04-28 (+29d) | 2020-03-30 → 2020-04-28 (+29d) |  |  | 0.4d → -18.6d |  |  |
| 60 | **SW Unit Test Specification & Test Cases Development** | 2020-03-30 → 2020-04-28 (+29d) | 2020-03-30 → 2020-04-28 (+29d) |  |  | 0.4d → -18.6d |  |  |
| 61 | Adaptor Unit Test Specification. | 2020-03-30 → 2020-04-28 (+29d) | 2020-03-30 → 2020-04-28 (+29d) |  |  | 0.4d → -18.6d |  |  |
| 62 | Adaptor Unit Test Cases Implementation. | 2020-03-30 → 2020-04-28 (+29d) | 2020-03-30 → 2020-04-28 (+29d) |  |  | 0.4d → -18.6d |  |  |
| 63 | Adaptor Unit Test Execution and its report generation. | 2020-03-30 → 2020-04-28 (+29d) | 2020-03-30 → 2020-04-28 (+29d) |  |  | 0.4d → -18.6d |  |  |
| 64 | SW Source Code & Unit Test Report Review | 2020-03-30 → 2020-04-28 (+29d) | 2020-03-31 → 2020-04-29 (+29d) |  |  | 0.4d → -18.6d |  |  |
| 65 | Release of LKA_L SW Source Code & Unit Test Report | 2020-03-31 → 2020-04-29 (+29d) | 2020-03-31 → 2020-04-29 (+29d) |  |  | 0.4d → -18.6d |  |  |
| 66 | **Vehicle Input Adaptor** |  | 2020-04-13 → 2020-05-07 (+24d) | 22.5d → 38.4d |  | 55d → 39.1d |  |  |
| 74 | **Adaptor Simulink Development** |  | 2020-04-07 → 2020-05-01 (+24d) | 12.5d → 28.4d |  | 55d → 39.1d |  |  |
| 76 | Simulink Import of ARXML & linking to Development Models |  | 2020-04-02 → 2020-04-28 (+26d) |  |  | 0.4d → -15.9d | 25, 45 → 25, 45, 19 |  |
| 77 | Simulink Design Release & Review |  | 2020-04-03 → 2020-04-28 (+25d) |  |  | 55d → 39.1d |  |  |
| 78 | Adaptor Code Generation from Simulink. | 2020-04-03 → 2020-04-28 (+25d) | 2020-04-07 → 2020-05-01 (+24d) |  |  | 55d → 39.1d |  |  |
| 79 | Release of Veh_Inp Adaptor Simulink Design | 2020-04-07 → 2020-05-01 (+24d) | 2020-04-07 → 2020-05-01 (+24d) |  |  | 55d → 39.1d |  |  |
| 80 | **SW Unit Test Specification & Test Cases Development** | 2020-04-07 → 2020-05-01 (+24d) | 2020-04-09 → 2020-05-05 (+26d) |  |  | 55d → 39.1d |  |  |
| 81 | Adaptor Unit Test Specification. | 2020-04-07 → 2020-05-01 (+24d) | 2020-04-08 → 2020-05-04 (+26d) |  |  | 55d → 39.1d |  |  |
| 82 | Adaptor Unit Test Cases Implementation. | 2020-04-08 → 2020-05-04 (+26d) | 2020-04-09 → 2020-05-05 (+26d) |  |  | 55d → 39.1d |  |  |
| 83 | Adaptor Unit Test Execution and its report generation. | 2020-04-09 → 2020-05-05 (+26d) | 2020-04-10 → 2020-05-06 (+26d) |  |  | 55d → 39.1d |  |  |
| 84 | SW Source Code & Unit Test Report Review | 2020-04-10 → 2020-05-06 (+26d) | 2020-04-13 → 2020-05-07 (+24d) |  |  | 55d → 39.1d |  |  |
| 85 | Release of Vhe_In Adaptor SW Source Code & Unit Test Report | 2020-04-13 → 2020-05-07 (+24d) | 2020-04-13 → 2020-05-07 (+24d) |  |  | 55d → 39.1d |  |  |
| 86 | **Vehicle Output Adaptor** |  | 2020-04-07 → 2020-05-05 (+28d) | 18.5d → 37.1d |  | 69d → 50.4d |  |  |
| 94 | **Adaptor Simulink Development** |  | 2020-04-06 → 2020-05-04 (+28d) | 11.5d → 30.1d |  | 59d → 40.4d |  |  |
| 96 | Simulink Import of ARXML & linking to Development Models |  | 2020-03-31 → 2020-04-29 (+29d) |  |  | 59d → 40.4d | 25, 65 → 25, 65, 19 |  |
| 97 | Simulink Design Release & Review | 2020-03-31 → 2020-04-29 (+29d) | 2020-04-02 → 2020-04-29 (+27d) |  |  | 59d → 40.4d |  |  |
| 98 | Adaptor Code Generation from Simulink. | 2020-04-02 → 2020-04-29 (+27d) | 2020-04-06 → 2020-05-04 (+28d) |  |  | 59d → 40.4d |  |  |
| 99 | Release of Veh_Out Adaptor Simulink Design | 2020-04-06 → 2020-05-04 (+28d) | 2020-04-06 → 2020-05-04 (+28d) |  |  | 59d → 40.4d |  |  |
| 100 | **SW Unit Test Specification & Test Cases Development** | 2020-04-06 → 2020-05-04 (+28d) | 2020-04-06 → 2020-05-04 (+28d) |  |  | 59d → 40.4d |  |  |
| 101 | Adaptor Unit Test Specification. | 2020-04-06 → 2020-05-04 (+28d) | 2020-04-06 → 2020-05-04 (+28d) |  |  | 59d → 40.4d |  |  |
| 102 | Adaptor Unit Test Cases Implementation. | 2020-04-06 → 2020-05-04 (+28d) | 2020-04-06 → 2020-05-04 (+28d) |  |  | 59d → 40.4d |  |  |
| 103 | Adaptor Unit Test Execution and its report generation. | 2020-04-06 → 2020-05-04 (+28d) | 2020-04-06 → 2020-05-04 (+28d) |  |  | 59d → 40.4d |  |  |
| 104 | SW Source Code & Unit Test Report Review | 2020-04-06 → 2020-05-04 (+28d) | 2020-04-07 → 2020-05-05 (+28d) |  |  | 59d → 40.4d |  |  |
| 105 | Release of Veh_Out Adaptor SW Source Code & Unit Test Report | 2020-04-07 → 2020-05-05 (+28d) | 2020-04-07 → 2020-05-05 (+28d) |  |  | 59d → 40.4d |  |  |
| 106 | **SW Integration** |  | 2020-04-28 → 2020-05-21 (+23d) | 43.3d → 59.2d |  | 55d → 39.1d |  |  |
| 109 | SW Integration. | 2020-04-13 → 2020-05-07 (+24d) | 2020-04-20 → 2020-05-13 (+23d) |  |  | 55d → 39.1d |  |  |
| 110 | SW Integration Test execution & Its Rerport Generation. | 2020-04-20 → 2020-05-13 (+23d) | 2020-04-22 → 2020-05-15 (+23d) |  |  | 55d → 39.1d |  |  |
| 111 | SW Version Management. | 2020-04-20 → 2020-05-13 (+23d) | 2020-04-23 → 2020-05-18 (+25d) |  |  | 57d → 41.1d |  |  |
| 112 | SW Release Notes. | 2020-04-23 → 2020-05-18 (+25d) | 2020-04-24 → 2020-05-19 (+25d) |  |  | 57d → 41.1d |  |  |
| 113 | HKMC SW Integration | 2020-04-22 → 2020-05-15 (+23d) | 2020-04-23 → 2020-05-18 (+25d) |  |  | 55d → 39.1d |  |  |
| 114 | HKMC Application SW Release | 2020-04-23 → 2020-05-18 (+25d) | 2020-04-23 → 2020-05-18 (+25d) |  |  | 55d → 39.1d |  |  |
| 115 | App SW Integration Testing on MCU | 2020-04-24 → 2020-05-19 (+25d) | 2020-04-28 → 2020-05-21 (+23d) |  |  | 55d → 39.1d |  |  |
| 116 | HKMC Application SW Release for Testing | 2020-04-28 → 2020-05-21 (+23d) | 2020-04-28 → 2020-05-21 (+23d) |  |  | 55d → 39.1d |  |  |
| 117 | **Basic SW** | 2020-04-23 → 2020-05-18 (+25d) | 2020-04-24 → 2020-05-19 (+25d) |  |  | 55d → 39.1d |  |  |
| 118 | SW Integration Review | 2020-04-23 → 2020-05-18 (+25d) | 2020-04-24 → 2020-05-19 (+25d) |  |  | 55d → 39.1d |  |  |
| 120 | **SW Release R2** | 2020-04-06 A → 2020-04-06 |  |  |  |  |  |  |
| 124 | **Application SW** | 2020-04-06 A → 2020-04-06 |  |  |  |  |  |  |
| 137 | **Adaptor 1 : FCA-Car/Ped Adaptor Development** | 2020-06-01 A → 2020-06-01 |  |  |  |  |  |  |
| 157 | **Adaptor 2 : LKA-L Adaptor Development** | 2020-06-01 A → 2020-06-01 |  |  |  | 1d → 0d |  |  |
| 197 | **Vehicle Output Adaptor** | 2020-06-03 A → 2020-06-03 |  |  |  | 11d → 0d |  |  |
